How a schedule from ProjectLibre changed from version to version. A marks actual dates.

## Version 1 (saved 2021-06-25)

Note of the change: Merge pull request #2 from norn93/file-modification-test

| ID | WBS | Task | Duration | Start | Finish | Predecessors |
| --- | --- | --- | --- | --- | --- | --- |
| 1 | 1 | **External milestones** | 29d | 2021-06-22 | 2021-07-30 |  |
| 2 |  | Motor Arrives | 0d | 2021-06-22 | 2021-07-30 |  |
| 3 |  | VCU Arrives | 0d | 2021-06-22 | 2021-07-30 |  |
| 4 | 2 | **Project Milestones** | 47d | 2021-06-22 | 2021-08-25 |  |
| 5 |  | M1: Motor Spin | 0d | 2021-08-04 | 2021-08-04 | 22 |
| 6 |  | Motor Fitted | 0d | 2021-08-25 | 2021-08-25 | 23 |
| 7 |  | Temporary Batttery | 0d | 2021-06-22 | 2021-06-22 |  |
| 8 |  | Battery Design | 0d | 2021-06-23 | 2021-06-23 | 29 |
| 9 |  | Auxiliary Equipment | 0d | 2021-06-22 | 2021-06-22 | 39 |
| 10 |  | Charging System | 0d | 2021-06-25 | 2021-06-25 | 44 |
| 11 |  | Functional Battery Pack | 0d | 2021-06-25 | 2021-06-25 | 49 |
| 12 |  | Engineering Approval | 0d | 2021-06-22 | 2021-06-22 | 55 |
| 13 |  | Registered Vehicle | 0d | 2021-06-23 | 2021-06-23 | 57 |
| 15 | 4 | **Motor Spinning Prep** | 30d | 2021-06-22 | 2021-08-02 |  |
| 16 |  | Bench PSU (340v) | 14d | 2021-06-22 | 2021-07-09 |  |
| 17 |  | VCU Controller | 1d | 2021-06-22 | 2021-06-22 |  |
| 18 |  | 12v PSU | 1d | 2021-06-22 | 2021-06-22 |  |
| 19 |  | Bench and location | 1d | 2021-06-22 | 2021-06-22 |  |
| 20 |  | Remove existing Controller | 1d | 2021-08-02 | 2021-08-02 | 2 |
| 21 |  | Coolant Pump | 1d | 2021-06-22 | 2021-06-22 |  |
| 22 |  | Motor Spin Assemble and Test | 2d | 2021-08-03 | 2021-08-04 | 15, 2, 3 |
| 23 | 6 | **Fit Motor** | 18d | 2021-08-02 | 2021-08-25 |  |
| 24 |  | Expore mounting and coupling ideas | 5d | 2021-08-02 | 2021-08-06 | 2 |
| 25 |  | Fabricate components | 5d | 2021-08-16 | 2021-08-20 | 28 |
| 26 |  | Mount the motor | 2d | 2021-08-23 | 2021-08-24 | 25 |
| 27 |  | Test in place | 1d | 2021-08-25 | 2021-08-25 | 26, 22 |
| 28 |  | Design coupling and mounts | 5d | 2021-08-09 | 2021-08-13 | 24 |
| 29 | 7 | **Design Battery** | 2d? | 2021-06-22 | 2021-06-23 |  |
| 30 |  | Design Mechanical Structure | 1d? | 2021-06-22 | 2021-06-22 |  |
| 31 |  | Design physical distribution | 1d? | 2021-06-22 | 2021-06-22 |  |
| 32 | 7.3 | **Design Cooling** | 2d? | 2021-06-22 | 2021-06-23 |  |
| 33 |  | Initial Designs | 1d | 2021-06-22 | 2021-06-22 |  |
| 34 |  | Modelling | 1d? | 2021-06-23 | 2021-06-23 | 33 |
| 35 |  | <New Task> | 1d? | 2021-06-22 | 2021-06-22 |  |
| 36 |  | <New Task> | 1d? | 2021-06-22 | 2021-06-22 |  |
| 37 | 8 | **Make Temp Battery** | 1d? | 2021-06-22 | 2021-06-22 |  |
| 38 |  | <New Task> | 1d? | 2021-06-22 | 2021-06-22 |  |
| 39 | 9 | **Construct and Mount Aux Equipment** | 1d? | 2021-06-22 | 2021-06-22 |  |
| 40 | 9.1 | **Vacuum System** | 1d? | 2021-06-22 | 2021-06-22 |  |
| 41 |  | <New Task> | 1d? | 2021-06-22 | 2021-06-22 |  |
| 42 | 9.2 | **12v System** | 1d? | 2021-06-22 | 2021-06-22 |  |
| 43 |  | <New Task> | 1d? | 2021-06-22 | 2021-06-22 |  |
| 44 | 10 | **Construct and Install Battery Charger** | 4d? | 2021-06-22 | 2021-06-25 |  |
| 45 |  | Source components and materials | 1d? | 2021-06-22 | 2021-06-22 |  |
| 46 |  | Build | 1d? | 2021-06-23 | 2021-06-23 | 45 |
| 47 |  | Test | 1d? | 2021-06-24 | 2021-06-24 | 46 |
| 48 |  | Install | 1d? | 2021-06-25 | 2021-06-25 | 47 |
| 49 | 11 | **Construct and Install Final Battery Pack** | 4d? | 2021-06-22 | 2021-06-25 |  |
| 50 |  | Source Components and materials | 1d? | 2021-06-22 | 2021-06-22 |  |
| 51 |  | Design BMS | 1d? | 2021-06-22 | 2021-06-22 |  |
| 52 |  | Install | 1d? | 2021-06-24 | 2021-06-24 | 59 |
| 53 |  | Final testing | 1d? | 2021-06-25 | 2021-06-25 | 52 |
| 54 |  | Build Modules | 1d? | 2021-06-23 | 2021-06-23 | 50 |
| 55 | 12 | **Get Engineering Approval** | 1d? | 2021-06-22 | 2021-06-22 |  |
| 56 |  | <New Task> | 1d? | 2021-06-22 | 2021-06-22 |  |
| 57 | 13 | **Register the vehicle** | 1d? | 2021-06-23 | 2021-06-23 | 55 |
| 58 |  | <New Task> | 1d? | 2021-06-23 | 2021-06-23 |  |
| 59 |  | Test Modules | 1d? | 2021-06-23 | 2021-06-23 |  |

## Version 2 (saved 2021-06-26)

Note of the change: Updated to reflect thoughts on 2021-06-26

Last finish 2021-08-25 → 2021-10-08 (+44d). Complete tasks 0 → 1.

Added:

| ID | Task | Duration | Start | Finish | Predecessors | Resources |
| --- | --- | --- | --- | --- | --- | --- |
| 16 | VCU setup | 1d | 2021-08-02 | 2021-08-02 | 3 | George |
| 20 | Coolant Pump setup | 0.5d | 2021-08-02 | 2021-08-02 | 2, 17 | George |
| 23 | Study relevant legislation | 1d | 2021-06-22 | 2021-06-22 |  |  |
| 27 | Design weight distribution measurement rig | 2d? | 2021-06-22 | 2021-06-23 |  |  |
| 28 | Build weight distribution measurment rig | 1d? | 2021-06-24 | 2021-06-24 | 27 |  |
| 29 | Measure weight distribution | 0.5d? | 2021-06-25 | 2021-06-25 | 28 |  |
| 31 | Measure weight distribution with no components | 0.5d? | 2021-07-07 | 2021-07-07 | 30 |  |
| 34 | Re-measure weight distribution | 0.5d? | 2021-08-25 | 2021-08-25 | 32 |  |
| 39 | **Design Battery Cooling** | 12d? | 2021-06-29 | 2021-07-14 |  |  |
| 44 | **Make Temporary Battery** | 43d? | 2021-06-29 | 2021-08-26 |  |  |
| 45 | Procure cells | 10d? | 2021-06-29 | 2021-07-12 | 36 | External |
| 46 | Fabricate temporary battery | 5d? | 2021-07-13 | 2021-07-19 | 45 |  |
| 47 | Connect battery to inverter | 1d? | 2021-08-26 | 2021-08-26 | 22, 46 |  |
| 49 | **12V System** | 49d? | 2021-06-22 | 2021-08-27 |  |  |
| 50 | Explore DC/DC charger options | 2d? | 2021-06-22 | 2021-06-23 |  |  |
| 51 | Procure DC/DC charger | 15d? | 2021-06-24 | 2021-07-14 | 50 | External |
| 52 | Install DC/DC charger | 1d? | 2021-08-27 | 2021-08-27 | 44, 51 |  |
| 54 | Explore OEM vacuum brake pump options | 2d? | 2021-06-22 | 2021-06-23 |  |  |
| 55 | Procure brake pump | 15d? | 2021-06-24 | 2021-07-14 | 54 | External |
| 70 | Find a suitable engineer | 1d? | 2021-06-22 | 2021-06-22 |  |  |
| 71 | Present car with evidence of compliance with legislation | 1d? | 2021-10-06 | 2021-10-06 | 68, 70 |  |
| 73 | Go over pits | 1d | 2021-10-07 | 2021-10-07 | 69 |  |
| 74 | Get plates from DOT | 0.12d | 2021-10-08 | 2021-10-08 | 73 |  |
| 75 | Install plates | 0.12d | 2021-10-08 | 2021-10-08 | 74 |  |

Removed: 18 12v PSU; 21 Coolant Pump; 32 Design Cooling; 35 <New Task>; 38 <New Task>; 41 <New Task>; 58 <New Task>

Changed:

| ID | Task | Start | Finish | Duration | Complete | Predecessors | Other |
| --- | --- | --- | --- | --- | --- | --- | --- |
| 2 | Motor Arrives |  |  |  | 0% → 20% |  | resources none → External |
| 3 | VCU Arrives |  |  |  | 0% → 30% |  | resources none → External |
| 4 | **Project Milestones** | 2021-06-22 → 2021-07-14 (+22d) | 2021-08-25 → 2021-10-08 (+44d) | 47d → 61.25d |  |  |  |
| 5 | M1: Motor Spin | 2021-08-04 → 2021-08-02 (-2d) | 2021-08-04 → 2021-08-02 (-2d) |  |  |  |  |
| 7 | Temporary Battery | 2021-06-22 → 2021-08-26 (+65d) | 2021-06-22 → 2021-08-26 (+65d) |  |  | none → 44 | was named Temporary Batttery |
| 8 | Battery Design | 2021-06-23 → 2021-07-14 (+21d) | 2021-06-23 → 2021-07-14 (+21d) |  |  |  |  |
| 9 | Auxiliary Equipment | 2021-06-22 → 2021-08-30 (+69d) | 2021-06-22 → 2021-08-30 (+69d) |  |  |  |  |
| 10 | Charging System | 2021-06-25 → 2021-07-16 (+21d) | 2021-06-25 → 2021-07-16 (+21d) |  |  |  |  |
| 11 | Functional Battery Pack | 2021-06-25 → 2021-10-05 (+102d) | 2021-06-25 → 2021-10-05 (+102d) |  |  |  |  |
| 12 | Engineering Approval | 2021-06-22 → 2021-10-06 (+106d) | 2021-06-22 → 2021-10-06 (+106d) |  |  |  |  |
| 13 | Registered Vehicle | 2021-06-23 → 2021-10-08 (+107d) | 2021-06-23 → 2021-10-08 (+107d) |  |  |  |  |
| 17 | 12v PSU setup |  |  | 1d → 0d | 0% → 100% |  | was named VCU Controller |
| 19 | Remove existing Controller |  |  | 1d → 0.5d |  |  |  |
| 21 | Motor Spin Assemble and Test | 2021-08-03 → 2021-08-02 (-1d) | 2021-08-04 → 2021-08-02 (-2d) | 2d → 1d |  | 14, 2, 3 → 2, 3 | resources none → George; Peter |
| 22 | **Fit Motor** | 2021-08-02 → 2021-06-22 (-41d) |  | 18d → 47d? | 0% → 4% |  |  |
| 24 | Expore mounting and coupling ideas |  |  | 5d → 5d? |  |  |  |
| 25 | Design coupling and mounts |  |  | 5d → 5d? |  |  |  |
| 26 | Fabricate components |  |  | 5d → 5d? |  |  |  |
| 30 | Remove ICE components | 2021-06-22 → 2021-06-30 (+8d) | 2021-06-22 → 2021-07-07 (+15d) | 1d? → 5d? |  | none → 29 | was named Design Mechanical Structure; constraint none → as late as possible |
| 32 | Mount the motor |  |  |  |  | 26 → 26, 31 |  |
| 35 | **Design Battery** |  | 2021-06-23 → 2021-07-14 (+21d) | 2d? → 17d? |  |  |  |
| 36 | Choose cell chemistry and format |  | 2021-06-22 → 2021-06-28 (+6d) | 1d? → 5d? |  |  | was named <New Task> |
| 37 | Design mechanical structure |  | 2021-06-22 → 2021-06-28 (+6d) | 1d? → 5d? |  |  | was named Make Temp Battery |
| 38 | Design physical distribution | 2021-06-22 → 2021-07-08 (+16d) | 2021-06-22 → 2021-07-14 (+22d) | 1d? → 5d? |  | none → 31 |  |
| 40 | Initial Designs | 2021-06-22 → 2021-06-29 (+7d) | 2021-06-22 → 2021-06-29 (+7d) |  |  | none → 36 |  |
| 41 | Modelling | 2021-06-23 → 2021-06-30 (+7d) | 2021-06-23 → 2021-07-06 (+13d) | 1d? → 5d? |  |  |  |
| 42 | Model evaluation | 2021-06-22 → 2021-07-07 (+15d) | 2021-06-22 → 2021-07-07 (+15d) |  |  | none → 41 | was named 12v System |
| 43 | Iteration | 2021-06-22 → 2021-07-08 (+16d) | 2021-06-22 → 2021-07-14 (+22d) | 1d? → 5d? |  | none → 42 | was named <New Task> |
| 48 | **Construct and Mount Aux Equipment** |  | 2021-06-22 → 2021-08-30 (+69d) | 1d? → 50d? |  |  |  |
| 53 | **Vacuum System** |  | 2021-06-22 → 2021-08-30 (+69d) | 1d? → 50d? |  |  |  |
| 56 | Install brake pump | 2021-06-22 → 2021-08-30 (+69d) | 2021-06-22 → 2021-08-30 (+69d) |  |  | none → 44, 49, 55 | was named <New Task> |
| 57 | **Construct and Install Battery Charger** |  | 2021-06-25 → 2021-07-16 (+21d) | 4d? → 19d? |  |  |  |
| 58 | Source components and materials |  | 2021-06-22 → 2021-07-12 (+20d) | 1d? → 15d? |  |  | resources none → External |
| 59 | Build | 2021-06-23 → 2021-07-13 (+20d) | 2021-06-23 → 2021-07-14 (+21d) | 1d? → 2d? |  |  |  |
| 60 | Install | 2021-06-25 → 2021-07-15 (+20d) | 2021-06-25 → 2021-07-15 (+20d) |  |  | 61 → 59 |  |
| 61 | Test | 2021-06-24 → 2021-07-16 (+22d) | 2021-06-24 → 2021-07-16 (+22d) |  |  | 59 → 60 |  |
| 62 | **Construct and Install Final Battery Pack** | 2021-06-22 → 2021-06-29 (+7d) | 2021-06-25 → 2021-10-05 (+102d) | 4d? → 71d? |  |  |  |
| 63 | Source Components and materials | 2021-06-22 → 2021-07-15 (+23d) | 2021-06-22 → 2021-08-25 (+64d) | 1d? → 30d? |  | none → 35 | resources none → External |
| 64 | Design BMS | 2021-06-22 → 2021-06-29 (+7d) | 2021-06-22 → 2021-06-29 (+7d) |  |  | none → 36 |  |
| 65 | Build Modules | 2021-06-23 → 2021-08-26 (+64d) | 2021-06-23 → 2021-09-22 (+91d) | 1d? → 20d? |  | 63 → 63, 64 |  |
| 66 | Test Modules | 2021-06-23 → 2021-09-23 (+92d) | 2021-06-23 → 2021-09-24 (+93d) | 1d? → 2d? |  | none → 65 |  |
| 67 | Install | 2021-06-24 → 2021-09-27 (+95d) | 2021-06-24 → 2021-10-01 (+99d) | 1d? → 5d? |  |  |  |
| 68 | Final testing | 2021-06-25 → 2021-10-04 (+101d) | 2021-06-25 → 2021-10-05 (+102d) | 1d? → 2d? |  |  |  |
| 69 | **Get Engineering Approval** |  | 2021-06-22 → 2021-10-06 (+106d) | 1d? → 77d? |  |  |  |
| 72 | **Register the vehicle** | 2021-06-23 → 2021-10-07 (+106d) | 2021-06-23 → 2021-10-08 (+107d) | 1d? → 1.25d |  |  |  |
