How a schedule from MS Project XML changed from version to version. A marks actual dates.

## Version 1 (saved 2021-06-25)

Note of the change: Merge pull request #2 from norn93/file-modification-test

| ID | WBS | Task | Duration | Start | Finish | Predecessors |
| --- | --- | --- | --- | --- | --- | --- |
| 1 | 1 | **External milestones** | 29d | 2021-06-22 | 2021-07-30 |  |
| 2 |  | Motor Arrives | 0d | 2021-06-22 | 2021-07-30 |  |
| 3 |  | VCU Arrives | 0d | 2021-06-22 | 2021-07-30 |  |
| 4 | 2 | **Project Milestones** | 47d | 2021-06-22 | 2021-08-25 |  |
| 5 |  | M1: Motor Spin | 0d | 2021-08-04 | 2021-08-04 | 22 |
| 6 |  | Motor Fitted | 0d | 2021-08-25 | 2021-08-25 | 23 |
| 7 |  | Temporary Batttery | 0d | 2021-06-22 | 2021-06-22 |  |
| 8 |  | Battery Design | 0d | 2021-06-23 | 2021-06-23 | 29 |
| 9 |  | Auxiliary Equipment | 0d | 2021-06-22 | 2021-06-22 | 39 |
| 10 |  | Charging System | 0d | 2021-06-25 | 2021-06-25 | 44 |
| 11 |  | Functional Battery Pack | 0d | 2021-06-25 | 2021-06-25 | 49 |
| 12 |  | Engineering Approval | 0d | 2021-06-22 | 2021-06-22 | 55 |
| 13 |  | Registered Vehicle | 0d | 2021-06-23 | 2021-06-23 | 57 |
| 15 | 4 | **Motor Spinning Prep** | 30d | 2021-06-22 | 2021-08-02 |  |
| 16 |  | Bench PSU (340v) | 14d | 2021-06-22 | 2021-07-09 |  |
| 17 |  | VCU Controller | 1d | 2021-06-22 | 2021-06-22 |  |
| 18 |  | 12v PSU | 1d | 2021-06-22 | 2021-06-22 |  |
| 19 |  | Bench and location | 1d | 2021-06-22 | 2021-06-22 |  |
| 20 |  | Remove existing Controller | 1d | 2021-08-02 | 2021-08-02 | 2 |
| 21 |  | Coolant Pump | 1d | 2021-06-22 | 2021-06-22 |  |
| 22 |  | Motor Spin Assemble and Test | 2d | 2021-08-03 | 2021-08-04 | 15, 2, 3 |
| 23 | 6 | **Fit Motor** | 18d | 2021-08-02 | 2021-08-25 |  |
| 24 |  | Expore mounting and coupling ideas | 5d | 2021-08-02 | 2021-08-06 | 2 |
| 25 |  | Fabricate components | 5d | 2021-08-16 | 2021-08-20 | 28 |
| 26 |  | Mount the motor | 2d | 2021-08-23 | 2021-08-24 | 25 |
| 27 |  | Test in place | 1d | 2021-08-25 | 2021-08-25 | 26, 22 |
| 28 |  | Design coupling and mounts | 5d | 2021-08-09 | 2021-08-13 | 24 |
| 29 | 7 | **Design Battery** | 2d? | 2021-06-22 | 2021-06-23 |  |
| 30 |  | Design Mechanical Structure | 1d? | 2021-06-22 | 2021-06-22 |  |
| 31 |  | Design physical distribution | 1d? | 2021-06-22 | 2021-06-22 |  |
| 32 | 7.3 | **Design Cooling** | 2d? | 2021-06-22 | 2021-06-23 |  |
| 33 |  | Initial Designs | 1d | 2021-06-22 | 2021-06-22 |  |
| 34 |  | Modelling | 1d? | 2021-06-23 | 2021-06-23 | 33 |
| 35 |  | <New Task> | 1d? | 2021-06-22 | 2021-06-22 |  |
| 36 |  | <New Task> | 1d? | 2021-06-22 | 2021-06-22 |  |
| 37 | 8 | **Make Temp Battery** | 1d? | 2021-06-22 | 2021-06-22 |  |
| 38 |  | <New Task> | 1d? | 2021-06-22 | 2021-06-22 |  |
| 39 | 9 | **Construct and Mount Aux Equipment** | 1d? | 2021-06-22 | 2021-06-22 |  |
| 40 | 9.1 | **Vacuum System** | 1d? | 2021-06-22 | 2021-06-22 |  |
| 41 |  | <New Task> | 1d? | 2021-06-22 | 2021-06-22 |  |
| 42 | 9.2 | **12v System** | 1d? | 2021-06-22 | 2021-06-22 |  |
| 43 |  | <New Task> | 1d? | 2021-06-22 | 2021-06-22 |  |
| 44 | 10 | **Construct and Install Battery Charger** | 4d? | 2021-06-22 | 2021-06-25 |  |
| 45 |  | Source components and materials | 1d? | 2021-06-22 | 2021-06-22 |  |
| 46 |  | Build | 1d? | 2021-06-23 | 2021-06-23 | 45 |
| 47 |  | Test | 1d? | 2021-06-24 | 2021-06-24 | 46 |
| 48 |  | Install | 1d? | 2021-06-25 | 2021-06-25 | 47 |
| 49 | 11 | **Construct and Install Final Battery Pack** | 4d? | 2021-06-22 | 2021-06-25 |  |
| 50 |  | Source Components and materials | 1d? | 2021-06-22 | 2021-06-22 |  |
| 51 |  | Design BMS | 1d? | 2021-06-22 | 2021-06-22 |  |
| 52 |  | Install | 1d? | 2021-06-24 | 2021-06-24 | 59 |
| 53 |  | Final testing | 1d? | 2021-06-25 | 2021-06-25 | 52 |
| 54 |  | Build Modules | 1d? | 2021-06-23 | 2021-06-23 | 50 |
| 55 | 12 | **Get Engineering Approval** | 1d? | 2021-06-22 | 2021-06-22 |  |
| 56 |  | <New Task> | 1d? | 2021-06-22 | 2021-06-22 |  |
| 57 | 13 | **Register the vehicle** | 1d? | 2021-06-23 | 2021-06-23 | 55 |
| 58 |  | <New Task> | 1d? | 2021-06-23 | 2021-06-23 |  |
| 59 |  | Test Modules | 1d? | 2021-06-23 | 2021-06-23 |  |

## Version 2 (saved 2021-06-26)

Note of the change: Updated to reflect thoughts on 2021-06-26

Last finish 2021-08-25 → 2021-10-08 (+44d). Complete tasks 0 → 1.

Added:

| ID | Task | Duration | Start | Finish | Predecessors | Resources |
| --- | --- | --- | --- | --- | --- | --- |
| 16 | VCU setup | 1d | 2021-08-02 | 2021-08-02 | 3 | George |
| 20 | Coolant Pump setup | 0.5d | 2021-08-02 | 2021-08-02 | 2, 17 | George |
| 23 | Study relevant legislation | 1d | 2021-06-22 | 2021-06-22 |  |  |
| 27 | Design weight distribution measurement rig | 2d? | 2021-06-22 | 2021-06-23 |  |  |
| 28 | Build weight distribution measurment rig | 1d? | 2021-06-24 | 2021-06-24 | 27 |  |
| 29 | Measure weight distribution | 0.5d? | 2021-06-25 | 2021-06-25 | 28 |  |
| 31 | Measure weight distribution with no components | 0.5d? | 2021-07-07 | 2021-07-07 | 30 |  |
| 34 | Re-measure weight distribution | 0.5d? | 2021-08-25 | 2021-08-25 | 32 |  |
| 39 | **Design Battery Cooling** | 12d? | 2021-06-29 | 2021-07-14 |  |  |
| 44 | **Make Temporary Battery** | 43d? | 2021-06-29 | 2021-08-26 |  |  |
| 45 | Procure cells | 10d? | 2021-06-29 | 2021-07-12 | 36 | External |
| 46 | Fabricate temporary battery | 5d? | 2021-07-13 | 2021-07-19 | 45 |  |
| 47 | Connect battery to inverter | 1d? | 2021-08-26 | 2021-08-26 | 22, 46 |  |
| 49 | **12V System** | 49d? | 2021-06-22 | 2021-08-27 |  |  |
| 50 | Explore DC/DC charger options | 2d? | 2021-06-22 | 2021-06-23 |  |  |
| 51 | Procure DC/DC charger | 15d? | 2021-06-24 | 2021-07-14 | 50 | External |
| 52 | Install DC/DC charger | 1d? | 2021-08-27 | 2021-08-27 | 44, 51 |  |
| 54 | Explore OEM vacuum brake pump options | 2d? | 2021-06-22 | 2021-06-23 |  |  |
| 55 | Procure brake pump | 15d? | 2021-06-24 | 2021-07-14 | 54 | External |
| 70 | Find a suitable engineer | 1d? | 2021-06-22 | 2021-06-22 |  |  |
| 71 | Present car with evidence of compliance with legislation | 1d? | 2021-10-06 | 2021-10-06 | 68, 70 |  |
| 73 | Go over pits | 1d | 2021-10-07 | 2021-10-07 | 69 |  |
| 74 | Get plates from DOT | 0.12d | 2021-10-08 | 2021-10-08 | 73 |  |
| 75 | Install plates | 0.12d | 2021-10-08 | 2021-10-08 | 74 |  |

Removed: 18 12v PSU; 21 Coolant Pump; 32 Design Cooling; 35 <New Task>; 38 <New Task>; 41 <New Task>; 58 <New Task>

Changed:

| ID | Task | Start | Finish | Duration | Complete | Predecessors | Other |
| --- | --- | --- | --- | --- | --- | --- | --- |
| 2 | Motor Arrives |  |  |  | 0% → 20% |  | resources none → External |
| 3 | VCU Arrives |  |  |  | 0% → 30% |  | resources none → External |
| 4 | **Project Milestones** | 2021-06-22 → 2021-07-14 (+22d) | 2021-08-25 → 2021-10-08 (+44d) | 47d → 61.25d |  |  |  |
| 5 | M1: Motor Spin | 2021-08-04 → 2021-08-02 (-2d) | 2021-08-04 → 2021-08-02 (-2d) |  |  |  |  |
| 7 | Temporary Battery | 2021-06-22 → 2021-08-26 (+65d) | 2021-06-22 → 2021-08-26 (+65d) |  |  | none → 44 | was named Temporary Batttery |
| 8 | Battery Design | 2021-06-23 → 2021-07-14 (+21d) | 2021-06-23 → 2021-07-14 (+21d) |  |  |  |  |
| 9 | Auxiliary Equipment | 2021-06-22 → 2021-08-30 (+69d) | 2021-06-22 → 2021-08-30 (+69d) |  |  |  |  |
| 10 | Charging System | 2021-06-25 → 2021-07-16 (+21d) | 2021-06-25 → 2021-07-16 (+21d) |  |  |  |  |
| 11 | Functional Battery Pack | 2021-06-25 → 2021-10-05 (+102d) | 2021-06-25 → 2021-10-05 (+102d) |  |  |  |  |
| 12 | Engineering Approval | 2021-06-22 → 2021-10-06 (+106d) | 2021-06-22 → 2021-10-06 (+106d) |  |  |  |  |
| 13 | Registered Vehicle | 2021-06-23 → 2021-10-08 (+107d) | 2021-06-23 → 2021-10-08 (+107d) |  |  |  |  |
| 17 | 12v PSU setup |  |  | 1d → 0d | 0% → 100% |  | was named VCU Controller |
| 19 | Remove existing Controller |  |  | 1d → 0.5d |  |  |  |
| 21 | Motor Spin Assemble and Test | 2021-08-03 → 2021-08-02 (-1d) | 2021-08-04 → 2021-08-02 (-2d) | 2d → 1d |  | 14, 2, 3 → 2, 3 | resources none → George; Peter |
| 22 | **Fit Motor** | 2021-08-02 → 2021-06-22 (-41d) |  | 18d → 47d? | 0% → 4% |  |  |
| 24 | Expore mounting and coupling ideas |  |  | 5d → 5d? |  |  |  |
| 25 | Design coupling and mounts |  |  | 5d → 5d? |  |  |  |
| 26 | Fabricate components |  |  | 5d → 5d? |  |  |  |
| 30 | Remove ICE components | 2021-06-22 → 2021-06-30 (+8d) | 2021-06-22 → 2021-07-07 (+15d) | 1d? → 5d? |  | none → 29 | was named Design Mechanical Structure; constraint none → as late as possible |
| 32 | Mount the motor |  |  |  |  | 26 → 26, 31 |  |
| 35 | **Design Battery** |  | 2021-06-23 → 2021-07-14 (+21d) | 2d? → 17d? |  |  |  |
| 36 | Choose cell chemistry and format |  | 2021-06-22 → 2021-06-28 (+6d) | 1d? → 5d? |  |  | was named <New Task> |
| 37 | Design mechanical structure |  | 2021-06-22 → 2021-06-28 (+6d) | 1d? → 5d? |  |  | was named Make Temp Battery |
| 38 | Design physical distribution | 2021-06-22 → 2021-07-08 (+16d) | 2021-06-22 → 2021-07-14 (+22d) | 1d? → 5d? |  | none → 31 |  |
| 40 | Initial Designs | 2021-06-22 → 2021-06-29 (+7d) | 2021-06-22 → 2021-06-29 (+7d) |  |  | none → 36 |  |
| 41 | Modelling | 2021-06-23 → 2021-06-30 (+7d) | 2021-06-23 → 2021-07-06 (+13d) | 1d? → 5d? |  |  |  |
| 42 | Model evaluation | 2021-06-22 → 2021-07-07 (+15d) | 2021-06-22 → 2021-07-07 (+15d) |  |  | none → 41 | was named 12v System |
| 43 | Iteration | 2021-06-22 → 2021-07-08 (+16d) | 2021-06-22 → 2021-07-14 (+22d) | 1d? → 5d? |  | none → 42 | was named <New Task> |
| 48 | **Construct and Mount Aux Equipment** |  | 2021-06-22 → 2021-08-30 (+69d) | 1d? → 50d? |  |  |  |
| 53 | **Vacuum System** |  | 2021-06-22 → 2021-08-30 (+69d) | 1d? → 50d? |  |  |  |
| 56 | Install brake pump | 2021-06-22 → 2021-08-30 (+69d) | 2021-06-22 → 2021-08-30 (+69d) |  |  | none → 44, 49, 55 | was named <New Task> |
| 57 | **Construct and Install Battery Charger** |  | 2021-06-25 → 2021-07-16 (+21d) | 4d? → 19d? |  |  |  |
| 58 | Source components and materials |  | 2021-06-22 → 2021-07-12 (+20d) | 1d? → 15d? |  |  | resources none → External |
| 59 | Build | 2021-06-23 → 2021-07-13 (+20d) | 2021-06-23 → 2021-07-14 (+21d) | 1d? → 2d? |  |  |  |
| 60 | Install | 2021-06-25 → 2021-07-15 (+20d) | 2021-06-25 → 2021-07-15 (+20d) |  |  | 61 → 59 |  |
| 61 | Test | 2021-06-24 → 2021-07-16 (+22d) | 2021-06-24 → 2021-07-16 (+22d) |  |  | 59 → 60 |  |
| 62 | **Construct and Install Final Battery Pack** | 2021-06-22 → 2021-06-29 (+7d) | 2021-06-25 → 2021-10-05 (+102d) | 4d? → 71d? |  |  |  |
| 63 | Source Components and materials | 2021-06-22 → 2021-07-15 (+23d) | 2021-06-22 → 2021-08-25 (+64d) | 1d? → 30d? |  | none → 35 | resources none → External |
| 64 | Design BMS | 2021-06-22 → 2021-06-29 (+7d) | 2021-06-22 → 2021-06-29 (+7d) |  |  | none → 36 |  |
| 65 | Build Modules | 2021-06-23 → 2021-08-26 (+64d) | 2021-06-23 → 2021-09-22 (+91d) | 1d? → 20d? |  | 63 → 63, 64 |  |
| 66 | Test Modules | 2021-06-23 → 2021-09-23 (+92d) | 2021-06-23 → 2021-09-24 (+93d) | 1d? → 2d? |  | none → 65 |  |
| 67 | Install | 2021-06-24 → 2021-09-27 (+95d) | 2021-06-24 → 2021-10-01 (+99d) | 1d? → 5d? |  |  |  |
| 68 | Final testing | 2021-06-25 → 2021-10-04 (+101d) | 2021-06-25 → 2021-10-05 (+102d) | 1d? → 2d? |  |  |  |
| 69 | **Get Engineering Approval** |  | 2021-06-22 → 2021-10-06 (+106d) | 1d? → 77d? |  |  |  |
| 72 | **Register the vehicle** | 2021-06-23 → 2021-10-07 (+106d) | 2021-06-23 → 2021-10-08 (+107d) | 1d? → 1.25d |  |  |  |

## Version 3 (saved 2021-07-04)

Note of the change: test updated task-15

Last finish 2021-10-08 → 2021-10-11 (+3d). Complete tasks 1 → 2.

Changed:

| ID | Task | Start | Finish | Duration | Complete | Total float |
| --- | --- | --- | --- | --- | --- | --- |
| 2 | Motor Arrives |  |  | 0d → 29d | 20% → 0% | none → 29.88d |
| 3 | VCU Arrives |  |  | 0d → 29d | 30% → 0% | none → 45.88d |
| 4 | **Project Milestones** |  | 2021-10-08 → 2021-10-11 (+3d) | 61.25d → 62.88d |  | none → 0d |
| 13 | Registered Vehicle | 2021-10-08 → 2021-10-11 (+3d) | 2021-10-08 → 2021-10-11 (+3d) |  |  | none → 0d |
| 14 | **Motor Spinning Prep** | 2021-06-22 A |  |  | 0% → 74% | none → 49.88d |
| 15 | Bench PSU (340v) | 2021-06-22 A | 2021-07-09 A |  | 0% → 100% |  |
| 17 | 12v PSU setup | 2021-06-22 A | 2021-06-22 A |  |  |  |
| 19 | Remove existing Controller |  |  | 0.5d → 1d |  | none → 49.88d |
| 20 | Coolant Pump setup |  |  | 0.5d → 1d |  | none → 49.88d |
| 22 | **Fit Motor** | 2021-06-22 A |  |  | 4% → 3% | none → 29.88d |
| 27 | Design weight distribution measurement rig | 2021-06-22 A |  |  |  | none → 2d |
| 29 | Measure weight distribution |  |  | 0.5d? → 1d? |  | none → 2d |
| 34 | Re-measure weight distribution |  |  | 0.5d? → 1d? |  | none → 29.88d |
| 72 | **Register the vehicle** |  | 2021-10-08 → 2021-10-11 (+3d) | 1.25d → 2.88d |  | none → 0d |
| 74 | Get plates from DOT |  |  | 0.12d → 1d |  | none → 0d |
| 75 | Install plates | 2021-10-08 → 2021-10-11 (+3d) | 2021-10-08 → 2021-10-11 (+3d) | 0.12d → 0.88d |  | none → 0d |

## Version 4 (saved 2021-07-04)

Note of the change: test updated outdent t21

Last finish stays 2021-10-11.

Changed:

| ID | Task | Start | Finish | Complete | Total float | Predecessors |
| --- | --- | --- | --- | --- | --- | --- |
| 5 | M1: Motor Spin | 2021-08-02 → 2021-08-03 (+1d) | 2021-08-02 → 2021-08-03 (+1d) |  | 49.88d → 48.88d |  |
| 14 | **Motor Spinning Prep** |  |  | 74% → 78% | 49.88d → 44.88d |  |
| 21 | Motor Spin Assemble and Test | 2021-08-02 → 2021-08-03 (+1d) | 2021-08-02 → 2021-08-03 (+1d) |  | 45.88d → 44.88d | 2, 3 → 14 |

## Version 5 (saved 2021-07-05)

Note of the change: Merge pull request #4 from norn93/file-modification-test

Last finish 2021-10-11 → 2022-01-04 (+85d).

Added:

| ID | Task | Duration | Start | Finish | Predecessors |
| --- | --- | --- | --- | --- | --- |
| 25 | Get engineering approval | 2d | 2021-08-23 | 2021-08-24 | 24, 88 |
| 34 | Resolve issues from testing | 10d | 2021-09-29 | 2021-10-12 | 33 |
| 39 | Research physical distribution in vehicle | 5d | 2021-06-22 | 2021-06-28 |  |
| 40 | **Detailed battery design** | 20d | 2021-08-03 | 2021-08-30 | 31, 37, 38, 39 |
| 43 | Get engineering approval | 2d | 2021-08-03 | 2021-08-04 | 88 |
| 48 | Model/prototype evaluation | 5d | 2021-08-03 | 2021-08-09 | 47 |
| 55 | **Speedometer sytem** | 9d | 2021-06-24 | 2021-07-06 |  |
| 56 | Understand current speedo design | 1d | 2021-06-24 | 2021-06-24 |  |
| 57 | Design replacement system | 3d | 2021-06-25 | 2021-06-29 | 56 |
| 58 | Build/install replacement system | 5d | 2021-06-30 | 2021-07-06 | 57 |
| 61 | Get engineering approval | 1d? | 2021-06-29 | 2021-06-29 | 88 |
| 65 | Research options | 5d | 2021-06-22 | 2021-06-28 |  |
| 73 | **Test jig** | 15d | 2021-11-23 | 2021-12-13 | 72 |
| 74 | Design test jig | 10d | 2021-11-23 | 2021-12-06 |  |
| 75 | Build test jig | 5d | 2021-12-07 | 2021-12-13 | 74 |
| 76 | Test modules | 5d | 2021-12-14 | 2021-12-20 | 72, 73 |
| 77 | Construct mounting | 20d | 2021-08-31 | 2021-09-27 |  |
| 79 | Installed battery testing | 2d | 2021-12-21 | 2021-12-22 | 78 |
| 80 | **Vehicle Testing** | 1d | 2021-12-23 | 2021-12-23 | 70 |
| 81 | Basic drive | 1d | 2021-12-23 | 2021-12-23 |  |
| 82 | Range test | 1d | 2021-12-23 | 2021-12-23 |  |
| 83 | Speed/power test | 1d | 2021-12-23 | 2021-12-23 |  |
| 84 | Temperature testing | 1d | 2021-12-23 | 2021-12-23 |  |
| 85 | 4WD test | 1d | 2021-12-23 | 2021-12-23 |  |
| 86 | Compliance test | 1d | 2021-12-23 | 2021-12-23 |  |

Removed: 7 Temporary Battery; 36 Choose cell chemistry and format; 44 Make Temporary Battery; 45 Procure cells; 46 Fabricate temporary battery; 66 Test Modules; 68 Final testing

Changed:

| ID | Task | Start | Finish | Duration | Complete | Total float | Predecessors | Other |
| --- | --- | --- | --- | --- | --- | --- | --- | --- |
| 1 | **External milestones** |  | 2021-07-30 → 2021-06-22 (-38d) | 29d → 0d |  | 29.88d → none |  |  |
| 2 | Motor Arrives |  | 2021-07-30 → 2021-06-22 (-38d) | 29d → 0d |  | 29.88d → none |  |  |
| 3 | VCU Arrives |  | 2021-07-30 → 2021-06-22 (-38d) | 29d → 0d |  | 44.88d → none |  |  |
| 4 | **Project Milestones** | 2021-07-14 → 2021-07-12 (-2d) | 2021-10-11 → 2022-01-04 (+85d) | 62.88d → 126d |  | 0d → none |  |  |
| 5 | M1: Motor Spin | 2021-08-03 → 2021-07-12 (-22d) | 2021-08-03 → 2021-07-12 (-22d) |  |  | 48.88d → none |  |  |
| 6 | Motor Fitted | 2021-08-25 → 2021-10-12 (+48d) | 2021-08-25 → 2021-10-12 (+48d) |  |  | 32.88d → none |  |  |
| 7 | Battery Design | 2021-07-14 → 2021-08-30 (+47d) | 2021-07-14 → 2021-08-30 (+47d) |  |  | 62.88d → none |  |  |
| 8 | Auxiliary Equipment | 2021-08-30 → 2021-07-30 (-31d) | 2021-08-30 → 2021-07-30 (-31d) |  |  | 29.88d → none |  |  |
| 9 | Charging System | 2021-07-16 → 2021-07-27 (+11d) | 2021-07-16 → 2021-07-27 (+11d) |  |  | 60.88d → none |  |  |
| 10 | Functional Battery Pack | 2021-10-05 → 2021-12-22 (+78d) | 2021-10-05 → 2021-12-22 (+78d) |  |  | 3.88d → none |  |  |
| 11 | Engineering Approval | 2021-10-06 → 2021-12-30 (+85d) | 2021-10-06 → 2021-12-30 (+85d) |  |  | 2.88d → none |  |  |
| 12 | Registered Vehicle | 2021-10-11 → 2022-01-04 (+85d) | 2021-10-11 → 2022-01-04 (+85d) |  |  | 0d → none |  |  |
| 13 | **Motor Spinning Prep** | 2021-06-22 A → 2021-06-22 | 2021-08-02 → 2021-07-09 (-24d) | 30d → 14d | 78% → 76% | 44.88d → none |  |  |
| 14 | Bench PSU (340v) | 2021-06-22 A → 2021-06-22 | 2021-07-09 A → 2021-07-09 |  |  |  |  |  |
| 15 | VCU setup | 2021-08-02 → 2021-06-22 (-41d) | 2021-08-02 → 2021-06-22 (-41d) |  |  | 44.88d → none |  |  |
| 16 | 12v PSU setup | 2021-06-22 A → 2021-06-22 | 2021-06-22 A → 2021-06-22 |  | 100% → 0% |  |  |  |
| 17 | Bench and location |  | 2021-06-22 → 2021-06-23 (+1d) | 1d → 2d | 0% → 25% | 73.88d → none |  |  |
| 18 | Remove existing Controller | 2021-08-02 → 2021-06-22 (-41d) | 2021-08-02 → 2021-06-22 (-41d) |  |  | 44.88d → none |  |  |
| 19 | Coolant Pump setup | 2021-08-02 → 2021-06-22 (-41d) | 2021-08-02 → 2021-06-22 (-41d) |  |  | 44.88d → none |  |  |
| 20 | Motor Spin Assemble and Test | 2021-08-03 → 2021-07-12 (-22d) | 2021-08-03 → 2021-07-12 (-22d) |  |  | 44.88d → none | 13 → 2, 3, 13 |  |
| 21 | **Fit Motor** | 2021-06-22 A → 2021-06-22 | 2021-08-25 → 2021-10-12 (+48d) | 47d? → 81d |  | 29.88d → none |  |  |
| 22 | Study relevant legislation |  | 2021-06-22 → 2021-06-23 (+1d) | 1d → 2d |  | 75.88d → none |  |  |
| 23 | Expore mounting and coupling ideas |  | 2021-08-06 → 2021-08-13 (+7d) | 5d? → 10d |  | 29.88d → none | 2 → 2, 30 |  |
| 24 | Design coupling and mounts | 2021-08-09 → 2021-08-16 (+7d) | 2021-08-13 → 2021-08-20 (+7d) | 5d? → 5d |  | 29.88d → none | 23 → 22, 23 |  |
| 26 | Fabricate components | 2021-08-16 → 2021-08-25 (+9d) | 2021-08-20 → 2021-09-13 (+24d) | 5d? → 14d |  | 29.88d → none | 24 → 24, 25 |  |
| 27 | Design weight distribution measurement rig | 2021-06-22 A → 2021-06-22 |  | 2d? → 2d | 50% → 100% | 2d → none |  |  |
| 28 | Build weight distribution measurment rig |  |  | 1d? → 1d |  | 2d → none |  |  |
| 29 | Measure weight distribution |  |  | 1d? → 1d |  | 2d → none |  |  |
| 30 | Remove ICE components | 2021-06-30 → 2021-07-29 (+29d) | 2021-07-07 → 2021-07-30 (+23d) | 5d? → 2d |  | 0d → none |  |  |
| 31 | Measure weight distribution with no components | 2021-07-07 → 2021-08-02 (+26d) | 2021-07-07 → 2021-08-02 (+26d) | 0.5d? → 1d |  | 0d → none |  |  |
| 32 | Mount the motor | 2021-08-23 → 2021-09-14 (+22d) | 2021-08-24 → 2021-09-27 (+34d) | 2d → 10d |  | 29.88d → none |  |  |
| 33 | Test in place | 2021-08-25 → 2021-09-28 (+34d) | 2021-08-25 → 2021-09-28 (+34d) |  |  | 29.88d → none |  |  |
| 35 | Re-measure weight distribution | 2021-08-25 → 2021-09-28 (+34d) | 2021-08-25 → 2021-09-28 (+34d) | 1d? → 1d |  | 29.88d → none |  |  |
| 36 | **Design Battery** |  | 2021-07-14 → 2021-08-30 (+47d) | 17d? → 50d |  | 0d → none |  |  |
| 37 | Research cell chemistry and format |  |  | 5d? → 5d |  | 12d → none |  | was named Design mechanical structure |
| 38 | Research mechanical structure (modules) | 2021-07-08 → 2021-06-22 (-16d) | 2021-07-14 → 2021-06-28 (-16d) | 5d? → 5d |  | 0d → none | 31 → none | was named Design physical distribution |
| 41 | Design battery | 2021-06-30 → 2021-08-03 (+34d) | 2021-07-06 → 2021-08-23 (+48d) | 5d? → 15d |  | 0d → none | 46 → none | was named Modelling |
| 42 | Design battery mounting | 2021-07-07 → 2021-08-24 (+48d) | 2021-07-07 → 2021-08-30 (+54d) | 1d? → 5d |  | 0d → none |  | was named Model evaluation |
| 44 | Design BMS |  | 2021-06-29 → 2021-07-05 (+6d) | 1d? → 5d |  | 41d → none | Choose cell chemistry and format → 37 |  |
| 45 | **Design Battery Cooling** |  | 2021-07-14 → 2021-08-30 (+47d) | 12d? → 45d |  | 0d → none |  |  |
| 46 | Initial Designs |  | 2021-06-29 → 2021-07-05 (+6d) | 1d → 5d |  | 0d → none | Choose cell chemistry and format → 37, 38 |  |
| 47 | Modelling/prototyping | 2021-08-26 → 2021-07-06 (-51d) | 2021-08-26 → 2021-08-02 (-24d) | 1d? → 20d |  | 29.88d → none | 21, Fabricate temporary battery → 46 | was named Connect battery to inverter |
| 49 | Iteration | 2021-07-08 → 2021-08-10 (+33d) | 2021-07-14 → 2021-08-30 (+47d) | 5d? → 15d |  | 0d → none | 42 → 48 |  |
| 50 | **Construct and Mount Aux Equipment** | 2021-06-22 → 2021-06-24 (+2d) | 2021-08-30 → 2021-07-30 (-31d) | 50d? → 27d? |  | 29.88d → none | none → 22 |  |
| 51 | **12V System** | 2021-06-22 → 2021-06-24 (+2d) | 2021-08-27 → 2021-07-23 (-35d) | 49d? → 22d |  | 29.88d → none |  |  |
| 52 | Explore DC/DC charger options | 2021-06-22 → 2021-06-24 (+2d) | 2021-06-23 → 2021-06-25 (+2d) | 2d? → 2d |  | 60.88d → none |  |  |
| 53 | Procure DC/DC charger | 2021-06-24 → 2021-06-28 (+4d) | 2021-07-14 → 2021-07-16 (+2d) | 15d? → 15d |  | 60.88d → none |  |  |
| 54 | Install DC/DC charger | 2021-08-27 → 2021-07-19 (-39d) | 2021-08-27 → 2021-07-23 (-35d) | 1d? → 5d |  | 29.88d → none | Make Temporary Battery, 53 → 53 |  |
| 59 | **Vacuum System** | 2021-06-22 → 2021-06-24 (+2d) | 2021-08-30 → 2021-07-30 (-31d) | 50d? → 27d? |  | 29.88d → none |  |  |
| 60 | Explore OEM vacuum brake pump options | 2021-06-22 → 2021-06-24 (+2d) | 2021-06-23 → 2021-06-25 (+2d) | 2d? → 2d |  | 61.88d → none | none → 22 |  |
| 62 | Procure brake pump | 2021-06-24 → 2021-06-30 (+6d) | 2021-07-14 → 2021-07-20 (+6d) | 15d? → 15d |  | 61.88d → none | 60 → 60, 61 |  |
| 63 | Install brake pump | 2021-08-30 → 2021-07-26 (-35d) | 2021-08-30 → 2021-07-30 (-31d) | 1d? → 5d |  | 29.88d → none | Make Temporary Battery, 51, 62 → 51, 62 |  |
| 64 | **Construct and Install Battery Charger** |  | 2021-07-16 → 2021-07-27 (+11d) | 19d? → 26d |  | 60.88d → none |  |  |
| 66 | Source components and materials | 2021-06-22 → 2021-06-29 (+7d) | 2021-07-12 → 2021-07-19 (+7d) | 15d? → 15d |  | 60.88d → none | none → 65 |  |
| 67 | Build | 2021-07-13 → 2021-07-20 (+7d) | 2021-07-14 → 2021-07-22 (+8d) | 2d? → 3d |  | 60.88d → none |  |  |
| 68 | Install | 2021-07-15 → 2021-07-23 (+8d) | 2021-07-15 → 2021-07-26 (+11d) | 1d? → 2d |  | 60.88d → none |  |  |
| 69 | Test | 2021-07-16 → 2021-07-27 (+11d) | 2021-07-16 → 2021-07-27 (+11d) | 1d? → 1d |  | 60.88d → none |  |  |
| 70 | **Construct and Install Final Battery Pack** | 2021-06-29 → 2021-08-31 (+63d) | 2021-10-05 → 2021-12-22 (+78d) | 71d? → 82d |  | 0d → none | none → 36 |  |
| 71 | Source Components and materials | 2021-07-15 → 2021-08-31 (+47d) | 2021-08-25 → 2021-10-11 (+47d) | 30d? → 30d |  | 0d → none | 36 → none |  |
| 72 | Build Modules | 2021-08-26 → 2021-10-12 (+47d) | 2021-09-22 → 2021-11-22 (+61d) | 20d? → 30d |  | 0d → none |  |  |
| 78 | Install | 2021-09-27 → 2021-12-14 (+78d) | 2021-10-01 → 2021-12-20 (+80d) | 5d? → 5d |  | 0d → none | Test Modules → 73, 77 |  |
| 87 | **Get Engineering Approval** |  | 2021-10-06 → 2021-12-30 (+85d) | 77d? → 138d |  | 0d → none |  |  |
| 88 | Find a suitable engineer |  | 2021-06-22 → 2021-06-28 (+6d) | 1d? → 5d |  | 75d → none |  |  |
| 89 | Present car with evidence of compliance with legislation | 2021-10-06 → 2021-12-24 (+79d) | 2021-10-06 → 2021-12-30 (+85d) | 1d? → 5d |  | 0d → none | Final testing, 88 → 80, 88 |  |
| 90 | **Register the vehicle** | 2021-10-07 → 2021-12-31 (+85d) | 2021-10-11 → 2022-01-04 (+85d) | 2.88d → 3d |  | 0d → none |  |  |
| 91 | Go over pits | 2021-10-07 → 2021-12-31 (+85d) | 2021-10-07 → 2021-12-31 (+85d) |  |  | 0d → none |  |  |
| 92 | Get plates from DOT | 2021-10-08 → 2022-01-03 (+87d) | 2021-10-08 → 2022-01-03 (+87d) |  |  | 0d → none |  |  |
| 93 | Install plates | 2021-10-11 → 2022-01-04 (+85d) | 2021-10-11 → 2022-01-04 (+85d) | 0.88d → 1d |  | 0d → none |  |  |

## Version 6 (saved 2021-07-19)

Note of the change: Merge pull request #5 from norn93/dev

Last finish 2022-01-04 → 2022-01-17 (+13d). Complete tasks 2 → 4.

Changed:

| ID | Task | Start | Finish | Duration | Complete |
| --- | --- | --- | --- | --- | --- |
| 1 | **External milestones** | 2021-06-22 → 2021-07-05 (+13d) | 2021-06-22 → 2021-07-30 (+38d) | 0d → 20d |  |
| 2 | Motor Arrives | 2021-06-22 → 2021-07-05 (+13d) | 2021-06-22 → 2021-07-30 (+38d) | 0d → 20d |  |
| 3 | VCU Arrives | 2021-06-22 → 2021-07-05 (+13d) | 2021-06-22 → 2021-07-05 (+13d) |  | 0% → 100% |
| 4 | **Project Milestones** | 2021-07-12 → 2021-08-03 (+22d) | 2022-01-04 → 2022-01-17 (+13d) | 126d → 119d |  |
| 5 | M1: Motor Spin | 2021-07-12 → 2021-08-03 (+22d) | 2021-07-12 → 2021-08-03 (+22d) |  |  |
| 6 | Motor Fitted | 2021-10-12 → 2021-10-25 (+13d) | 2021-10-12 → 2021-10-25 (+13d) |  |  |
| 7 | Battery Design | 2021-08-30 → 2021-09-10 (+11d) | 2021-08-30 → 2021-09-10 (+11d) |  |  |
| 8 | Auxiliary Equipment | 2021-07-30 → 2021-08-12 (+13d) | 2021-07-30 → 2021-08-12 (+13d) |  |  |
| 9 | Charging System | 2021-07-27 → 2021-08-09 (+13d) | 2021-07-27 → 2021-08-09 (+13d) |  |  |
| 10 | Functional Battery Pack | 2021-12-22 → 2022-01-04 (+13d) | 2021-12-22 → 2022-01-04 (+13d) |  |  |
| 11 | Engineering Approval | 2021-12-30 → 2022-01-12 (+13d) | 2021-12-30 → 2022-01-12 (+13d) |  |  |
| 12 | Registered Vehicle | 2022-01-04 → 2022-01-17 (+13d) | 2022-01-04 → 2022-01-17 (+13d) |  |  |
| 13 | **Motor Spinning Prep** |  | 2021-07-09 → 2021-08-02 (+24d) | 14d → 30d | 76% → 81% |
| 15 | VCU setup | 2021-06-22 → 2021-07-05 (+13d) | 2021-06-22 → 2021-07-05 (+13d) |  | 0% → 90% |
| 16 | 12v PSU setup | 2021-06-22 → 2021-07-05 (+13d) | 2021-06-22 → 2021-07-05 (+13d) |  | 0% → 100% |
| 18 | Remove existing Controller | 2021-06-22 → 2021-08-02 (+41d) | 2021-06-22 → 2021-08-02 (+41d) |  |  |
| 19 | Coolant Pump setup | 2021-06-22 → 2021-08-02 (+41d) | 2021-06-22 → 2021-08-02 (+41d) |  |  |
| 20 | Motor Spin Assemble and Test | 2021-07-12 → 2021-08-03 (+22d) | 2021-07-12 → 2021-08-03 (+22d) |  |  |
| 21 | **Fit Motor** |  | 2021-10-12 → 2021-10-25 (+13d) | 81d → 90d |  |
| 22 | Study relevant legislation | 2021-06-22 → 2021-07-05 (+13d) | 2021-06-23 → 2021-07-06 (+13d) |  |  |
| 23 | Expore mounting and coupling ideas | 2021-08-02 → 2021-08-13 (+11d) | 2021-08-13 → 2021-08-26 (+13d) |  |  |
| 24 | Design coupling and mounts | 2021-08-16 → 2021-08-27 (+11d) | 2021-08-20 → 2021-09-02 (+13d) |  |  |
| 25 | Get engineering approval | 2021-08-23 → 2021-09-03 (+11d) | 2021-08-24 → 2021-09-06 (+13d) |  |  |
| 26 | Fabricate components | 2021-08-25 → 2021-09-07 (+13d) | 2021-09-13 → 2021-09-24 (+11d) |  |  |
| 28 | Build weight distribution measurment rig | 2021-06-24 → 2021-07-05 (+11d) | 2021-06-24 → 2021-07-05 (+11d) |  |  |
| 29 | Measure weight distribution | 2021-06-25 → 2021-07-06 (+11d) | 2021-06-25 → 2021-07-06 (+11d) |  |  |
| 30 | Remove ICE components | 2021-07-29 → 2021-08-11 (+13d) | 2021-07-30 → 2021-08-12 (+13d) |  |  |
| 31 | Measure weight distribution with no components | 2021-08-02 → 2021-08-13 (+11d) | 2021-08-02 → 2021-08-13 (+11d) |  |  |
| 32 | Mount the motor | 2021-09-14 → 2021-09-27 (+13d) | 2021-09-27 → 2021-10-08 (+11d) |  |  |
| 33 | Test in place | 2021-09-28 → 2021-10-11 (+13d) | 2021-09-28 → 2021-10-11 (+13d) |  |  |
| 34 | Resolve issues from testing | 2021-09-29 → 2021-10-12 (+13d) | 2021-10-12 → 2021-10-25 (+13d) |  |  |
| 35 | Re-measure weight distribution | 2021-09-28 → 2021-10-11 (+13d) | 2021-09-28 → 2021-10-11 (+13d) |  |  |
| 36 | **Design Battery** | 2021-06-22 → 2021-07-05 (+13d) | 2021-08-30 → 2021-09-10 (+11d) |  |  |
| 37 | Research cell chemistry and format | 2021-06-22 → 2021-07-05 (+13d) | 2021-06-28 → 2021-07-09 (+11d) |  |  |
| 38 | Research mechanical structure (modules) | 2021-06-22 → 2021-07-05 (+13d) | 2021-06-28 → 2021-07-09 (+11d) |  |  |
| 39 | Research physical distribution in vehicle | 2021-06-22 → 2021-07-05 (+13d) | 2021-06-28 → 2021-07-09 (+11d) |  |  |
| 40 | **Detailed battery design** | 2021-08-03 → 2021-08-16 (+13d) | 2021-08-30 → 2021-09-10 (+11d) |  |  |
| 41 | Design battery | 2021-08-03 → 2021-08-16 (+13d) | 2021-08-23 → 2021-09-03 (+11d) |  |  |
| 42 | Design battery mounting | 2021-08-24 → 2021-09-06 (+13d) | 2021-08-30 → 2021-09-10 (+11d) |  |  |
| 43 | Get engineering approval | 2021-08-03 → 2021-08-16 (+13d) | 2021-08-04 → 2021-08-17 (+13d) |  |  |
| 44 | Design BMS | 2021-06-29 → 2021-07-12 (+13d) | 2021-07-05 → 2021-07-16 (+11d) |  |  |
| 45 | **Design Battery Cooling** | 2021-06-29 → 2021-07-12 (+13d) | 2021-08-30 → 2021-09-10 (+11d) |  |  |
| 46 | Initial Designs | 2021-06-29 → 2021-07-12 (+13d) | 2021-07-05 → 2021-07-16 (+11d) |  |  |
| 47 | Modelling/prototyping | 2021-07-06 → 2021-07-19 (+13d) | 2021-08-02 → 2021-08-13 (+11d) |  |  |
| 48 | Model/prototype evaluation | 2021-08-03 → 2021-08-16 (+13d) | 2021-08-09 → 2021-08-20 (+11d) |  |  |
| 49 | Iteration | 2021-08-10 → 2021-08-23 (+13d) | 2021-08-30 → 2021-09-10 (+11d) |  |  |
| 50 | **Construct and Mount Aux Equipment** | 2021-06-24 → 2021-07-07 (+13d) | 2021-07-30 → 2021-08-12 (+13d) |  |  |
| 51 | **12V System** | 2021-06-24 → 2021-07-07 (+13d) | 2021-07-23 → 2021-08-05 (+13d) |  |  |
| 52 | Explore DC/DC charger options | 2021-06-24 → 2021-07-07 (+13d) | 2021-06-25 → 2021-07-08 (+13d) |  |  |
| 53 | Procure DC/DC charger | 2021-06-28 → 2021-07-09 (+11d) | 2021-07-16 → 2021-07-29 (+13d) |  |  |
| 54 | Install DC/DC charger | 2021-07-19 → 2021-07-30 (+11d) | 2021-07-23 → 2021-08-05 (+13d) |  |  |
| 55 | **Speedometer sytem** | 2021-06-24 → 2021-07-07 (+13d) | 2021-07-06 → 2021-07-19 (+13d) |  |  |
| 56 | Understand current speedo design | 2021-06-24 → 2021-07-07 (+13d) | 2021-06-24 → 2021-07-07 (+13d) |  |  |
| 57 | Design replacement system | 2021-06-25 → 2021-07-08 (+13d) | 2021-06-29 → 2021-07-12 (+13d) |  |  |
| 58 | Build/install replacement system | 2021-06-30 → 2021-07-13 (+13d) | 2021-07-06 → 2021-07-19 (+13d) |  |  |
| 59 | **Vacuum System** | 2021-06-24 → 2021-07-07 (+13d) | 2021-07-30 → 2021-08-12 (+13d) |  |  |
| 60 | Explore OEM vacuum brake pump options | 2021-06-24 → 2021-07-07 (+13d) | 2021-06-25 → 2021-07-08 (+13d) |  |  |
| 61 | Get engineering approval | 2021-06-29 → 2021-07-12 (+13d) | 2021-06-29 → 2021-07-12 (+13d) |  |  |
| 62 | Procure brake pump | 2021-06-30 → 2021-07-13 (+13d) | 2021-07-20 → 2021-08-02 (+13d) |  |  |
| 63 | Install brake pump | 2021-07-26 → 2021-08-06 (+11d) | 2021-07-30 → 2021-08-12 (+13d) |  |  |
| 64 | **Construct and Install Battery Charger** | 2021-06-22 → 2021-07-05 (+13d) | 2021-07-27 → 2021-08-09 (+13d) |  |  |
| 65 | Research options | 2021-06-22 → 2021-07-05 (+13d) | 2021-06-28 → 2021-07-09 (+11d) |  |  |
| 66 | Source components and materials | 2021-06-29 → 2021-07-12 (+13d) | 2021-07-19 → 2021-07-30 (+11d) |  |  |
| 67 | Build | 2021-07-20 → 2021-08-02 (+13d) | 2021-07-22 → 2021-08-04 (+13d) |  |  |
| 68 | Install | 2021-07-23 → 2021-08-05 (+13d) | 2021-07-26 → 2021-08-06 (+11d) |  |  |
| 69 | Test | 2021-07-27 → 2021-08-09 (+13d) | 2021-07-27 → 2021-08-09 (+13d) |  |  |
| 70 | **Construct and Install Final Battery Pack** | 2021-08-31 → 2021-09-13 (+13d) | 2021-12-22 → 2022-01-04 (+13d) |  |  |
| 71 | Source Components and materials | 2021-08-31 → 2021-09-13 (+13d) | 2021-10-11 → 2021-10-22 (+11d) |  |  |
| 72 | Build Modules | 2021-10-12 → 2021-10-25 (+13d) | 2021-11-22 → 2021-12-03 (+11d) |  |  |
| 73 | **Test jig** | 2021-11-23 → 2021-12-06 (+13d) | 2021-12-13 → 2021-12-24 (+11d) |  |  |

| ID | Task | Start | Finish |
| --- | --- | --- | --- |
| 74 | Design test jig | 2021-11-23 → 2021-12-06 (+13d) | 2021-12-06 → 2021-12-17 (+11d) |
| 75 | Build test jig | 2021-12-07 → 2021-12-20 (+13d) | 2021-12-13 → 2021-12-24 (+11d) |
| 76 | Test modules | 2021-12-14 → 2021-12-27 (+13d) | 2021-12-20 → 2021-12-31 (+11d) |
| 77 | Construct mounting | 2021-08-31 → 2021-09-13 (+13d) | 2021-09-27 → 2021-10-08 (+11d) |
| 78 | Install | 2021-12-14 → 2021-12-27 (+13d) | 2021-12-20 → 2021-12-31 (+11d) |
| 79 | Installed battery testing | 2021-12-21 → 2022-01-03 (+13d) | 2021-12-22 → 2022-01-04 (+13d) |
| 80 | **Vehicle Testing** | 2021-12-23 → 2022-01-05 (+13d) | 2021-12-23 → 2022-01-05 (+13d) |
| 81 | Basic drive | 2021-12-23 → 2022-01-05 (+13d) | 2021-12-23 → 2022-01-05 (+13d) |
| 82 | Range test | 2021-12-23 → 2022-01-05 (+13d) | 2021-12-23 → 2022-01-05 (+13d) |
| 83 | Speed/power test | 2021-12-23 → 2022-01-05 (+13d) | 2021-12-23 → 2022-01-05 (+13d) |
| 84 | Temperature testing | 2021-12-23 → 2022-01-05 (+13d) | 2021-12-23 → 2022-01-05 (+13d) |
| 85 | 4WD test | 2021-12-23 → 2022-01-05 (+13d) | 2021-12-23 → 2022-01-05 (+13d) |
| 86 | Compliance test | 2021-12-23 → 2022-01-05 (+13d) | 2021-12-23 → 2022-01-05 (+13d) |
| 87 | **Get Engineering Approval** | 2021-06-22 → 2021-07-05 (+13d) | 2021-12-30 → 2022-01-12 (+13d) |
| 88 | Find a suitable engineer | 2021-06-22 → 2021-07-05 (+13d) | 2021-06-28 → 2021-07-09 (+11d) |
| 89 | Present car with evidence of compliance with legislation | 2021-12-24 → 2022-01-06 (+13d) | 2021-12-30 → 2022-01-12 (+13d) |
| 90 | **Register the vehicle** | 2021-12-31 → 2022-01-13 (+13d) | 2022-01-04 → 2022-01-17 (+13d) |
| 91 | Go over pits | 2021-12-31 → 2022-01-13 (+13d) | 2021-12-31 → 2022-01-13 (+13d) |
| 92 | Get plates from DOT | 2022-01-03 → 2022-01-14 (+11d) | 2022-01-03 → 2022-01-14 (+11d) |
| 93 | Install plates | 2022-01-04 → 2022-01-17 (+13d) | 2022-01-04 → 2022-01-17 (+13d) |

## Version 7 (saved 2021-07-19)

Last finish 2022-01-17 → 2022-01-31 (+14d). Complete tasks 4 → 5.

Changed:

| ID | Task | Start | Finish | Duration | Complete | Other |
| --- | --- | --- | --- | --- | --- | --- |
| 1 | **External milestones** | 2021-07-05 → 2021-07-19 (+14d) | 2021-07-30 → 2021-08-31 (+32d) | 20d → 31d |  |  |
| 2 | Motor Arrives | 2021-07-05 → 2021-08-31 (+57d) | 2021-07-30 → 2021-08-31 (+32d) | 20d → 0d |  | constraint none → start no earlier than 2021-08-31 |
| 3 | VCU Arrives | 2021-07-05 → 2021-07-19 (+14d) | 2021-07-05 → 2021-07-19 (+14d) |  |  |  |
| 4 | **Project Milestones** | 2021-08-03 → 2021-08-23 (+20d) | 2022-01-17 → 2022-01-31 (+14d) | 119d → 115d |  |  |
| 5 | M1: Motor Spin | 2021-08-03 → 2021-09-01 (+29d) | 2021-08-03 → 2021-09-01 (+29d) |  |  |  |
| 6 | Motor Fitted | 2021-10-25 → 2021-11-10 (+16d) | 2021-10-25 → 2021-11-10 (+16d) |  |  |  |
| 7 | Battery Design | 2021-09-10 → 2021-09-24 (+14d) | 2021-09-10 → 2021-09-24 (+14d) |  |  |  |
| 8 | Auxiliary Equipment | 2021-08-12 → 2021-08-26 (+14d) | 2021-08-12 → 2021-08-26 (+14d) |  |  |  |
| 9 | Charging System | 2021-08-09 → 2021-08-23 (+14d) | 2021-08-09 → 2021-08-23 (+14d) |  |  |  |
| 10 | Functional Battery Pack | 2022-01-04 → 2022-01-18 (+14d) | 2022-01-04 → 2022-01-18 (+14d) |  |  |  |
| 11 | Engineering Approval | 2022-01-12 → 2022-01-26 (+14d) | 2022-01-12 → 2022-01-26 (+14d) |  |  |  |
| 12 | Registered Vehicle | 2022-01-17 → 2022-01-31 (+14d) | 2022-01-17 → 2022-01-31 (+14d) |  |  |  |
| 13 | **Motor Spinning Prep** |  | 2021-08-02 → 2021-08-31 (+29d) | 30d → 51d | 81% → 86% |  |
| 15 | VCU setup |  | 2021-07-05 → 2021-07-16 (+11d) | 1d → 10d | 90% → 100% |  |
| 16 | 12v PSU setup | 2021-07-05 → 2021-07-19 (+14d) | 2021-07-05 → 2021-07-19 (+14d) |  |  |  |
| 17 | Bench and location |  | 2021-06-23 → 2021-07-05 (+12d) | 2d → 10d | 25% → 70% |  |
| 18 | Remove existing Controller | 2021-08-02 → 2021-08-31 (+29d) | 2021-08-02 → 2021-08-31 (+29d) |  |  |  |
| 19 | Coolant Pump setup | 2021-08-02 → 2021-08-31 (+29d) | 2021-08-02 → 2021-08-31 (+29d) |  |  |  |
| 20 | Motor Spin Assemble and Test | 2021-08-03 → 2021-09-01 (+29d) | 2021-08-03 → 2021-09-01 (+29d) |  |  |  |
| 21 | **Fit Motor** |  | 2021-10-25 → 2021-11-10 (+16d) | 90d → 102d |  |  |
| 22 | Study relevant legislation | 2021-07-05 → 2021-07-19 (+14d) | 2021-07-06 → 2021-07-20 (+14d) |  |  |  |
| 23 | Expore mounting and coupling ideas | 2021-08-13 → 2021-08-31 (+18d) | 2021-08-26 → 2021-09-13 (+18d) |  |  |  |
| 24 | Design coupling and mounts | 2021-08-27 → 2021-09-14 (+18d) | 2021-09-02 → 2021-09-20 (+18d) |  |  |  |
| 25 | Get engineering approval | 2021-09-03 → 2021-09-21 (+18d) | 2021-09-06 → 2021-09-22 (+16d) |  |  |  |
| 26 | Fabricate components | 2021-09-07 → 2021-09-23 (+16d) | 2021-09-24 → 2021-10-12 (+18d) |  |  |  |
| 28 | Build weight distribution measurment rig | 2021-07-05 → 2021-07-19 (+14d) | 2021-07-05 → 2021-07-19 (+14d) |  |  |  |
| 29 | Measure weight distribution | 2021-07-06 → 2021-07-20 (+14d) | 2021-07-06 → 2021-07-20 (+14d) |  |  |  |
| 30 | Remove ICE components | 2021-08-11 → 2021-08-25 (+14d) | 2021-08-12 → 2021-08-26 (+14d) |  |  |  |
| 31 | Measure weight distribution with no components | 2021-08-13 → 2021-08-27 (+14d) | 2021-08-13 → 2021-08-27 (+14d) |  |  |  |
| 32 | Mount the motor | 2021-09-27 → 2021-10-13 (+16d) | 2021-10-08 → 2021-10-26 (+18d) |  |  |  |
| 33 | Test in place | 2021-10-11 → 2021-10-27 (+16d) | 2021-10-11 → 2021-10-27 (+16d) |  |  |  |
| 34 | Resolve issues from testing | 2021-10-12 → 2021-10-28 (+16d) | 2021-10-25 → 2021-11-10 (+16d) |  |  |  |
| 35 | Re-measure weight distribution | 2021-10-11 → 2021-10-27 (+16d) | 2021-10-11 → 2021-10-27 (+16d) |  |  |  |
| 36 | **Design Battery** | 2021-07-05 → 2021-07-19 (+14d) | 2021-09-10 → 2021-09-24 (+14d) |  |  |  |
| 37 | Research cell chemistry and format | 2021-07-05 → 2021-07-19 (+14d) | 2021-07-09 → 2021-07-23 (+14d) |  |  |  |
| 38 | Research mechanical structure (modules) | 2021-07-05 → 2021-07-19 (+14d) | 2021-07-09 → 2021-07-23 (+14d) |  |  |  |
| 39 | Research physical distribution in vehicle | 2021-07-05 → 2021-07-19 (+14d) | 2021-07-09 → 2021-07-23 (+14d) |  |  |  |
| 40 | **Detailed battery design** | 2021-08-16 → 2021-08-30 (+14d) | 2021-09-10 → 2021-09-24 (+14d) |  |  |  |
| 41 | Design battery | 2021-08-16 → 2021-08-30 (+14d) | 2021-09-03 → 2021-09-17 (+14d) |  |  |  |
| 42 | Design battery mounting | 2021-09-06 → 2021-09-20 (+14d) | 2021-09-10 → 2021-09-24 (+14d) |  |  |  |
| 43 | Get engineering approval | 2021-08-16 → 2021-08-30 (+14d) | 2021-08-17 → 2021-08-31 (+14d) |  |  |  |
| 44 | Design BMS | 2021-07-12 → 2021-07-26 (+14d) | 2021-07-16 → 2021-07-30 (+14d) |  |  |  |
| 45 | **Design Battery Cooling** | 2021-07-12 → 2021-07-26 (+14d) | 2021-09-10 → 2021-09-24 (+14d) |  |  |  |
| 46 | Initial Designs | 2021-07-12 → 2021-07-26 (+14d) | 2021-07-16 → 2021-07-30 (+14d) |  |  |  |
| 47 | Modelling/prototyping | 2021-07-19 → 2021-08-02 (+14d) | 2021-08-13 → 2021-08-27 (+14d) |  |  |  |
| 48 | Model/prototype evaluation | 2021-08-16 → 2021-08-30 (+14d) | 2021-08-20 → 2021-09-03 (+14d) |  |  |  |
| 49 | Iteration | 2021-08-23 → 2021-09-06 (+14d) | 2021-09-10 → 2021-09-24 (+14d) |  |  |  |
| 50 | **Construct and Mount Aux Equipment** | 2021-07-07 → 2021-07-21 (+14d) | 2021-08-12 → 2021-08-26 (+14d) |  |  |  |
| 51 | **12V System** | 2021-07-07 → 2021-07-21 (+14d) | 2021-08-05 → 2021-08-19 (+14d) |  |  |  |
| 52 | Explore DC/DC charger options | 2021-07-07 → 2021-07-21 (+14d) | 2021-07-08 → 2021-07-22 (+14d) |  |  |  |
| 53 | Procure DC/DC charger | 2021-07-09 → 2021-07-23 (+14d) | 2021-07-29 → 2021-08-12 (+14d) |  |  |  |
| 54 | Install DC/DC charger | 2021-07-30 → 2021-08-13 (+14d) | 2021-08-05 → 2021-08-19 (+14d) |  |  |  |
| 55 | **Speedometer sytem** | 2021-07-07 → 2021-07-21 (+14d) | 2021-07-19 → 2021-08-02 (+14d) |  |  |  |
| 56 | Understand current speedo design | 2021-07-07 → 2021-07-21 (+14d) | 2021-07-07 → 2021-07-21 (+14d) |  |  |  |
| 57 | Design replacement system | 2021-07-08 → 2021-07-22 (+14d) | 2021-07-12 → 2021-07-26 (+14d) |  |  |  |
| 58 | Build/install replacement system | 2021-07-13 → 2021-07-27 (+14d) | 2021-07-19 → 2021-08-02 (+14d) |  |  |  |
| 59 | **Vacuum System** | 2021-07-07 → 2021-07-21 (+14d) | 2021-08-12 → 2021-08-26 (+14d) |  |  |  |
| 60 | Explore OEM vacuum brake pump options | 2021-07-07 → 2021-07-21 (+14d) | 2021-07-08 → 2021-07-22 (+14d) |  |  |  |
| 61 | Get engineering approval | 2021-07-12 → 2021-07-26 (+14d) | 2021-07-12 → 2021-07-26 (+14d) |  |  |  |
| 62 | Procure brake pump | 2021-07-13 → 2021-07-27 (+14d) | 2021-08-02 → 2021-08-16 (+14d) |  |  |  |
| 63 | Install brake pump | 2021-08-06 → 2021-08-20 (+14d) | 2021-08-12 → 2021-08-26 (+14d) |  |  |  |
| 64 | **Construct and Install Battery Charger** | 2021-07-05 → 2021-07-19 (+14d) | 2021-08-09 → 2021-08-23 (+14d) |  |  |  |
| 65 | Research options | 2021-07-05 → 2021-07-19 (+14d) | 2021-07-09 → 2021-07-23 (+14d) |  |  |  |
| 66 | Source components and materials | 2021-07-12 → 2021-07-26 (+14d) | 2021-07-30 → 2021-08-13 (+14d) |  |  |  |
| 67 | Build | 2021-08-02 → 2021-08-16 (+14d) | 2021-08-04 → 2021-08-18 (+14d) |  |  |  |
| 68 | Install | 2021-08-05 → 2021-08-19 (+14d) | 2021-08-06 → 2021-08-20 (+14d) |  |  |  |
| 69 | Test | 2021-08-09 → 2021-08-23 (+14d) | 2021-08-09 → 2021-08-23 (+14d) |  |  |  |
| 70 | **Construct and Install Final Battery Pack** | 2021-09-13 → 2021-09-27 (+14d) | 2022-01-04 → 2022-01-18 (+14d) |  |  |  |
| 71 | Source Components and materials | 2021-09-13 → 2021-09-27 (+14d) | 2021-10-22 → 2021-11-05 (+14d) |  |  |  |
| 72 | Build Modules | 2021-10-25 → 2021-11-08 (+14d) | 2021-12-03 → 2021-12-17 (+14d) |  |  |  |

| ID | Task | Start | Finish |
| --- | --- | --- | --- |
| 73 | **Test jig** | 2021-12-06 → 2021-12-20 (+14d) | 2021-12-24 → 2022-01-07 (+14d) |
| 74 | Design test jig | 2021-12-06 → 2021-12-20 (+14d) | 2021-12-17 → 2021-12-31 (+14d) |
| 75 | Build test jig | 2021-12-20 → 2022-01-03 (+14d) | 2021-12-24 → 2022-01-07 (+14d) |
| 76 | Test modules | 2021-12-27 → 2022-01-10 (+14d) | 2021-12-31 → 2022-01-14 (+14d) |
| 77 | Construct mounting | 2021-09-13 → 2021-09-27 (+14d) | 2021-10-08 → 2021-10-22 (+14d) |
| 78 | Install | 2021-12-27 → 2022-01-10 (+14d) | 2021-12-31 → 2022-01-14 (+14d) |
| 79 | Installed battery testing | 2022-01-03 → 2022-01-17 (+14d) | 2022-01-04 → 2022-01-18 (+14d) |
| 80 | **Vehicle Testing** | 2022-01-05 → 2022-01-19 (+14d) | 2022-01-05 → 2022-01-19 (+14d) |
| 81 | Basic drive | 2022-01-05 → 2022-01-19 (+14d) | 2022-01-05 → 2022-01-19 (+14d) |
| 82 | Range test | 2022-01-05 → 2022-01-19 (+14d) | 2022-01-05 → 2022-01-19 (+14d) |
| 83 | Speed/power test | 2022-01-05 → 2022-01-19 (+14d) | 2022-01-05 → 2022-01-19 (+14d) |
| 84 | Temperature testing | 2022-01-05 → 2022-01-19 (+14d) | 2022-01-05 → 2022-01-19 (+14d) |
| 85 | 4WD test | 2022-01-05 → 2022-01-19 (+14d) | 2022-01-05 → 2022-01-19 (+14d) |
| 86 | Compliance test | 2022-01-05 → 2022-01-19 (+14d) | 2022-01-05 → 2022-01-19 (+14d) |
| 87 | **Get Engineering Approval** | 2021-07-05 → 2021-07-19 (+14d) | 2022-01-12 → 2022-01-26 (+14d) |
| 88 | Find a suitable engineer | 2021-07-05 → 2021-07-19 (+14d) | 2021-07-09 → 2021-07-23 (+14d) |
| 89 | Present car with evidence of compliance with legislation | 2022-01-06 → 2022-01-20 (+14d) | 2022-01-12 → 2022-01-26 (+14d) |
| 90 | **Register the vehicle** | 2022-01-13 → 2022-01-27 (+14d) | 2022-01-17 → 2022-01-31 (+14d) |
| 91 | Go over pits | 2022-01-13 → 2022-01-27 (+14d) | 2022-01-13 → 2022-01-27 (+14d) |
| 92 | Get plates from DOT | 2022-01-14 → 2022-01-28 (+14d) | 2022-01-14 → 2022-01-28 (+14d) |
| 93 | Install plates | 2022-01-17 → 2022-01-31 (+14d) | 2022-01-17 → 2022-01-31 (+14d) |

## Version 8 (saved 2021-10-21)

Note of the change: Adding Peter's reports for the motor spin

Last finish 2022-01-31 → 2022-03-04 (+32d). Complete tasks 5 → 3.

Changed:

| ID | Task | Start | Finish | Duration | Complete |
| --- | --- | --- | --- | --- | --- |
| 1 | **External milestones** | 2021-07-19 → 2021-07-20 (+1d) |  | 31d → 30d |  |
| 3 | VCU Arrives | 2021-07-19 → 2021-07-20 (+1d) | 2021-07-19 → 2021-07-20 (+1d) |  | 100% → 0% |
| 4 | **Project Milestones** | 2021-08-23 → 2021-08-24 (+1d) | 2022-01-31 → 2022-03-04 (+32d) | 115d → 138d |  |
| 6 | Motor Fitted | 2021-11-10 → 2021-12-10 (+30d) | 2021-11-10 → 2021-12-10 (+30d) |  |  |
| 7 | Battery Design | 2021-09-24 → 2021-10-28 (+34d) | 2021-09-24 → 2021-10-28 (+34d) |  |  |
| 8 | Auxiliary Equipment | 2021-08-26 → 2021-08-27 (+1d) | 2021-08-26 → 2021-08-27 (+1d) |  |  |
| 9 | Charging System | 2021-08-23 → 2021-08-24 (+1d) | 2021-08-23 → 2021-08-24 (+1d) |  |  |
| 10 | Functional Battery Pack | 2022-01-18 → 2022-02-21 (+34d) | 2022-01-18 → 2022-02-21 (+34d) |  |  |
| 11 | Engineering Approval | 2022-01-26 → 2022-03-01 (+34d) | 2022-01-26 → 2022-03-01 (+34d) |  |  |
| 12 | Registered Vehicle | 2022-01-31 → 2022-03-04 (+32d) | 2022-01-31 → 2022-03-04 (+32d) |  |  |
| 13 | **Motor Spinning Prep** |  |  |  | 86% → 61% |
| 16 | 12v PSU setup | 2021-07-19 → 2021-07-20 (+1d) | 2021-07-19 → 2021-07-20 (+1d) |  | 100% → 0% |
| 17 | Bench and location |  | 2021-07-05 → 2021-07-28 (+23d) | 10d → 27d | 70% → 31% |
| 21 | **Fit Motor** |  | 2021-11-10 → 2021-12-10 (+30d) | 102d → 124d |  |
| 22 | Study relevant legislation | 2021-07-19 → 2021-07-20 (+1d) | 2021-07-20 → 2021-07-21 (+1d) |  |  |
| 23 | Expore mounting and coupling ideas | 2021-08-31 → 2021-09-30 (+30d) | 2021-09-13 → 2021-10-13 (+30d) |  |  |
| 24 | Design coupling and mounts | 2021-09-14 → 2021-10-14 (+30d) | 2021-09-20 → 2021-10-20 (+30d) |  |  |
| 25 | Get engineering approval | 2021-09-21 → 2021-10-21 (+30d) | 2021-09-22 → 2021-10-22 (+30d) |  |  |
| 26 | Fabricate components | 2021-09-23 → 2021-10-25 (+32d) | 2021-10-12 → 2021-11-11 (+30d) |  |  |
| 28 | Build weight distribution measurment rig | 2021-07-19 → 2021-07-20 (+1d) | 2021-07-19 → 2021-07-20 (+1d) |  |  |
| 29 | Measure weight distribution | 2021-07-20 → 2021-07-21 (+1d) | 2021-07-20 → 2021-07-21 (+1d) |  |  |
| 30 | Remove ICE components | 2021-08-25 → 2021-09-28 (+34d) | 2021-08-26 → 2021-09-29 (+34d) |  |  |
| 31 | Measure weight distribution with no components | 2021-08-27 → 2021-09-30 (+34d) | 2021-08-27 → 2021-09-30 (+34d) |  |  |
| 32 | Mount the motor | 2021-10-13 → 2021-11-12 (+30d) | 2021-10-26 → 2021-11-25 (+30d) |  |  |
| 33 | Test in place | 2021-10-27 → 2021-11-26 (+30d) | 2021-10-27 → 2021-11-26 (+30d) |  |  |
| 34 | Resolve issues from testing | 2021-10-28 → 2021-11-29 (+32d) | 2021-11-10 → 2021-12-10 (+30d) |  |  |
| 35 | Re-measure weight distribution | 2021-10-27 → 2021-11-26 (+30d) | 2021-10-27 → 2021-11-26 (+30d) |  |  |
| 36 | **Design Battery** | 2021-07-19 → 2021-07-20 (+1d) | 2021-09-24 → 2021-10-28 (+34d) | 50d → 73d | 0% → 4% |
| 37 | Research cell chemistry and format | 2021-07-19 → 2021-07-20 (+1d) | 2021-07-23 → 2021-08-26 (+34d) | 5d → 28d | 0% → 9% |
| 38 | Research mechanical structure (modules) | 2021-07-19 → 2021-07-20 (+1d) | 2021-07-23 → 2021-08-26 (+34d) | 5d → 28d | 0% → 9% |
| 39 | Research physical distribution in vehicle | 2021-07-19 → 2021-07-20 (+1d) | 2021-07-23 → 2021-07-26 (+3d) |  |  |
| 40 | **Detailed battery design** | 2021-08-30 → 2021-10-01 (+32d) | 2021-09-24 → 2021-10-28 (+34d) |  |  |
| 41 | Design battery | 2021-08-30 → 2021-10-01 (+32d) | 2021-09-17 → 2021-10-21 (+34d) |  |  |
| 42 | Design battery mounting | 2021-09-20 → 2021-10-22 (+32d) | 2021-09-24 → 2021-10-28 (+34d) |  |  |
| 43 | Get engineering approval | 2021-08-30 → 2021-10-01 (+32d) | 2021-08-31 → 2021-10-04 (+34d) |  |  |
| 44 | Design BMS | 2021-07-26 → 2021-08-27 (+32d) | 2021-07-30 → 2021-09-02 (+34d) |  |  |
| 45 | **Design Battery Cooling** | 2021-07-26 → 2021-08-27 (+32d) | 2021-09-24 → 2021-10-28 (+34d) |  |  |
| 46 | Initial Designs | 2021-07-26 → 2021-08-27 (+32d) | 2021-07-30 → 2021-09-02 (+34d) |  |  |
| 47 | Modelling/prototyping | 2021-08-02 → 2021-09-03 (+32d) | 2021-08-27 → 2021-09-30 (+34d) |  |  |
| 48 | Model/prototype evaluation | 2021-08-30 → 2021-10-01 (+32d) | 2021-09-03 → 2021-10-07 (+34d) |  |  |
| 49 | Iteration | 2021-09-06 → 2021-10-08 (+32d) | 2021-09-24 → 2021-10-28 (+34d) |  |  |
| 50 | **Construct and Mount Aux Equipment** | 2021-07-21 → 2021-07-22 (+1d) | 2021-08-26 → 2021-08-27 (+1d) |  |  |
| 51 | **12V System** | 2021-07-21 → 2021-07-22 (+1d) | 2021-08-19 → 2021-08-20 (+1d) |  |  |
| 52 | Explore DC/DC charger options | 2021-07-21 → 2021-07-22 (+1d) | 2021-07-22 → 2021-07-23 (+1d) |  |  |
| 53 | Procure DC/DC charger | 2021-07-23 → 2021-07-26 (+3d) | 2021-08-12 → 2021-08-13 (+1d) |  |  |
| 54 | Install DC/DC charger | 2021-08-13 → 2021-08-16 (+3d) | 2021-08-19 → 2021-08-20 (+1d) |  |  |
| 55 | **Speedometer sytem** | 2021-07-21 → 2021-07-22 (+1d) | 2021-08-02 → 2021-08-03 (+1d) |  |  |
| 56 | Understand current speedo design | 2021-07-21 → 2021-07-22 (+1d) | 2021-07-21 → 2021-07-22 (+1d) |  |  |
| 57 | Design replacement system | 2021-07-22 → 2021-07-23 (+1d) | 2021-07-26 → 2021-07-27 (+1d) |  |  |
| 58 | Build/install replacement system | 2021-07-27 → 2021-07-28 (+1d) | 2021-08-02 → 2021-08-03 (+1d) |  |  |
| 59 | **Vacuum System** | 2021-07-21 → 2021-07-22 (+1d) | 2021-08-26 → 2021-08-27 (+1d) |  |  |
| 60 | Explore OEM vacuum brake pump options | 2021-07-21 → 2021-07-22 (+1d) | 2021-07-22 → 2021-07-23 (+1d) |  |  |
| 61 | Get engineering approval | 2021-07-26 → 2021-07-27 (+1d) | 2021-07-26 → 2021-07-27 (+1d) |  |  |
| 62 | Procure brake pump | 2021-07-27 → 2021-07-28 (+1d) | 2021-08-16 → 2021-08-17 (+1d) |  |  |
| 63 | Install brake pump | 2021-08-20 → 2021-08-23 (+3d) | 2021-08-26 → 2021-08-27 (+1d) |  |  |
| 64 | **Construct and Install Battery Charger** | 2021-07-19 → 2021-07-20 (+1d) | 2021-08-23 → 2021-08-24 (+1d) |  |  |
| 65 | Research options | 2021-07-19 → 2021-07-20 (+1d) | 2021-07-23 → 2021-07-26 (+3d) |  |  |
| 66 | Source components and materials | 2021-07-26 → 2021-07-27 (+1d) | 2021-08-13 → 2021-08-16 (+3d) |  |  |
| 67 | Build | 2021-08-16 → 2021-08-17 (+1d) | 2021-08-18 → 2021-08-19 (+1d) |  |  |
| 68 | Install | 2021-08-19 → 2021-08-20 (+1d) | 2021-08-20 → 2021-08-23 (+3d) |  |  |
| 69 | Test | 2021-08-23 → 2021-08-24 (+1d) | 2021-08-23 → 2021-08-24 (+1d) |  |  |
| 70 | **Construct and Install Final Battery Pack** | 2021-09-27 → 2021-10-29 (+32d) | 2022-01-18 → 2022-02-21 (+34d) |  |  |
| 71 | Source Components and materials | 2021-09-27 → 2021-10-29 (+32d) | 2021-11-05 → 2021-12-09 (+34d) |  |  |
| 72 | Build Modules | 2021-11-08 → 2021-12-10 (+32d) | 2021-12-17 → 2022-01-20 (+34d) |  |  |
| 73 | **Test jig** | 2021-12-20 → 2022-01-21 (+32d) | 2022-01-07 → 2022-02-10 (+34d) |  |  |
| 74 | Design test jig | 2021-12-20 → 2022-01-21 (+32d) | 2021-12-31 → 2022-02-03 (+34d) |  |  |
| 75 | Build test jig | 2022-01-03 → 2022-02-04 (+32d) | 2022-01-07 → 2022-02-10 (+34d) |  |  |
| 76 | Test modules | 2022-01-10 → 2022-02-11 (+32d) | 2022-01-14 → 2022-02-17 (+34d) |  |  |
| 77 | Construct mounting | 2021-09-27 → 2021-10-29 (+32d) | 2021-10-22 → 2021-11-25 (+34d) |  |  |
| 78 | Install | 2022-01-10 → 2022-02-11 (+32d) | 2022-01-14 → 2022-02-17 (+34d) |  |  |

| ID | Task | Start | Finish | Duration |
| --- | --- | --- | --- | --- |
| 79 | Installed battery testing | 2022-01-17 → 2022-02-18 (+32d) | 2022-01-18 → 2022-02-21 (+34d) |  |
| 80 | **Vehicle Testing** | 2022-01-19 → 2022-02-22 (+34d) | 2022-01-19 → 2022-02-22 (+34d) |  |
| 81 | Basic drive | 2022-01-19 → 2022-02-22 (+34d) | 2022-01-19 → 2022-02-22 (+34d) |  |
| 82 | Range test | 2022-01-19 → 2022-02-22 (+34d) | 2022-01-19 → 2022-02-22 (+34d) |  |
| 83 | Speed/power test | 2022-01-19 → 2022-02-22 (+34d) | 2022-01-19 → 2022-02-22 (+34d) |  |
| 84 | Temperature testing | 2022-01-19 → 2022-02-22 (+34d) | 2022-01-19 → 2022-02-22 (+34d) |  |
| 85 | 4WD test | 2022-01-19 → 2022-02-22 (+34d) | 2022-01-19 → 2022-02-22 (+34d) |  |
| 86 | Compliance test | 2022-01-19 → 2022-02-22 (+34d) | 2022-01-19 → 2022-02-22 (+34d) |  |
| 87 | **Get Engineering Approval** | 2021-07-19 → 2021-07-20 (+1d) | 2022-01-26 → 2022-03-01 (+34d) | 138d → 161d |
| 88 | Find a suitable engineer | 2021-07-19 → 2021-07-20 (+1d) | 2021-07-23 → 2021-07-26 (+3d) |  |
| 89 | Present car with evidence of compliance with legislation | 2022-01-20 → 2022-02-23 (+34d) | 2022-01-26 → 2022-03-01 (+34d) |  |
| 90 | **Register the vehicle** | 2022-01-27 → 2022-03-02 (+34d) | 2022-01-31 → 2022-03-04 (+32d) |  |
| 91 | Go over pits | 2022-01-27 → 2022-03-02 (+34d) | 2022-01-27 → 2022-03-02 (+34d) |  |
| 92 | Get plates from DOT | 2022-01-28 → 2022-03-03 (+34d) | 2022-01-28 → 2022-03-03 (+34d) |  |
| 93 | Install plates | 2022-01-31 → 2022-03-04 (+32d) | 2022-01-31 → 2022-03-04 (+32d) |  |
